# timeLineProgettoContatore

Schedule from MS Project, 2021-02-08 to 2021-03-17.

## Calendars

- Standard: Mon-Fri 09:00-13:00, 14:00-18:00; Sat-Sun off.

## Resources

| Resource |
| --- |
| Moscatello Enrico |
| Luppino Vincenzo |
| Angeretti Marco |
| Pignata Marcello |

## Schedule

| ID | WBS | Task | Duration | Start | Finish | Predecessors | Total slack | Free slack | Resources | Work |
| --- | --- | --- | --- | --- | --- | --- | --- | --- | --- | --- |
| 1 | 1 | **Progetto lettura contatore** | 28d | 2021-02-08 | 2021-03-17 |  | 0d |  |  | 912h |
| 2 | 1.1 | **1 Materiali** | 10d | 2021-02-08 | 2021-02-19 |  | 0d |  |  | 80h |
| 3 | 1.1.1 | 1.1 Ricerca materiali | 3d | 2021-02-08 | 2021-02-10 |  | 0d |  | Moscatello Enrico | 24h |
| 4 | 1.1.2 | 1.2 Acquisto materiali | 7d | 2021-02-11 | 2021-02-19 | 3 | 0d |  | Moscatello Enrico | 56h |
| 5 | 1.2 | **2 Prototipo 1** | 16d | 2021-02-08 | 2021-03-01 |  | 0d |  |  | 416h |
| 6 | 1.2.1 | **2.1 Realizzazione software** | 13d | 2021-02-08 | 2021-02-24 |  | 0d |  |  | 288h |
| 7 | 1.2.1.1 | **2.1.1 Riconoscimento numeri/targhe** | 13d | 2021-02-08 | 2021-02-24 |  | 0d |  |  | 72h |
| 8 | 1.2.1.1.1 | 2.1.1.1 Ricerca | 2d | 2021-02-08 | 2021-02-09 |  | 4d | 0d | Pignata Marcello | 16h |
| 9 | 1.2.1.1.2 | 2.1.1.2 Sviluppo software | 5d | 2021-02-10 | 2021-02-16 | 8 | 4d |  | Pignata Marcello | 40h |
| 10 | 1.2.1.1.3 | 2.1.1.3 Test sul raspberry | 2d | 2021-02-23 | 2021-02-24 | 9, 28 | 0d |  | Pignata Marcello | 16h |
| 11 | 1.2.1.2 | **2.1.2 Riconoscimento lancette micro misurazioni** | 13d | 2021-02-08 | 2021-02-24 |  | 0d |  |  | 72h |
| 12 | 1.2.1.2.1 | 2.1.2.1 Ricerca | 2d | 2021-02-08 | 2021-02-09 |  | 4d | 0d | Moscatello Enrico | 16h |
| 13 | 1.2.1.2.2 | 2.1.2.2 Sviluppo software | 5d | 2021-02-10 | 2021-02-16 | 12 | 4d |  | Moscatello Enrico | 40h |
| 14 | 1.2.1.2.3 | 2.1.2.3 Test sul raspberry | 2d | 2021-02-23 | 2021-02-24 | 13, 28 | 0d |  | Moscatello Enrico | 16h |
| 15 | 1.2.1.3 | **2.1.3 Gestione stand-by del dispositivo** | 13d | 2021-02-08 | 2021-02-24 |  | 0d |  |  | 72h |
| 16 | 1.2.1.3.1 | 2.1.3.1 Ricerca | 2d | 2021-02-08 | 2021-02-09 |  | 4d | 0d | Angeretti Marco | 16h |
| 17 | 1.2.1.3.2 | 2.1.3.2 Sviluppo software | 5d | 2021-02-10 | 2021-02-16 | 16 | 4d |  | Angeretti Marco | 40h |
| 18 | 1.2.1.3.3 | 2.1.3.3 Test sul raspberry | 2d | 2021-02-23 | 2021-02-24 | 17, 28 | 0d |  | Angeretti Marco | 16h |
| 19 | 1.2.1.4 | **2.1.4 Invio dati al cloud server** | 13d | 2021-02-08 | 2021-02-24 |  | 0d |  |  | 72h |
| 20 | 1.2.1.4.1 | 2.1.4.1 Ricerca | 2d | 2021-02-08 | 2021-02-09 |  | 4d | 0d | Luppino Vincenzo | 16h |
| 21 | 1.2.1.4.2 | 2.1.4.2 Sviluppo software | 5d | 2021-02-10 | 2021-02-16 | 20 | 4d |  | Luppino Vincenzo | 40h |
| 22 | 1.2.1.4.3 | 2.1.4.3 Test sul raspberry | 2d | 2021-02-23 | 2021-02-24 | 21, 28 | 0d |  | Luppino Vincenzo | 16h |
| 23 | 1.2.2 | **2.2 Realizzazione hardware** | 12d | 2021-02-08 | 2021-02-23 |  | 1d |  |  | 104h |
| 24 | 1.2.2.1 | **2.2.1 Progettazione 3d** | 11d | 2021-02-08 | 2021-02-22 |  | 1d |  |  | 88h |
| 25 | 1.2.2.1.1 | 2.2.1.1 Disegno dell'involucro in 3d | 4d | 2021-02-08 | 2021-02-11 |  | 1d | 0d | Luppino Vincenzo | 32h |
| 26 | 1.2.2.1.2 | 2.2.1.2 Stampa 3d | 7d | 2021-02-12 | 2021-02-22 | 25 | 1d | 0d | Luppino Vincenzo | 56h |

| ID | WBS | Task | Duration | Start | Finish | Predecessors | Total slack | Free slack | Resources | Work |
| --- | --- | --- | --- | --- | --- | --- | --- | --- | --- | --- |
| 27 | 1.2.2.2 | **2.2.2 Montaggio hardware** | 2d | 2021-02-22 | 2021-02-23 |  | 0d |  |  | 16h |
| 28 | 1.2.2.2.1 | 2.2.2.1 Montaggio provvisorio | 1d | 2021-02-22 | 2021-02-22 | 4 | 0d |  | Angeretti Marco | 8h |
| 29 | 1.2.2.2.2 | 2.2.2.2 Montaggio completo con involucro 3d | 1d | 2021-02-23 | 2021-02-23 | 26, 28 | 1d |  | Angeretti Marco | 8h |
| 30 | 1.2.3 | 2.3 Test completo prototipo 1 | 3d | 2021-02-25 | 2021-03-01 | 10, 14, 18, 22, 29 | 0d |  | Moscatello Enrico | 24h |
| 31 | 1.3 | **3 Prototipo 2** | 15d | 2021-02-25 | 2021-03-17 |  | 0d |  |  | 416h |
| 32 | 1.3.1 | **3.1 Realizzazione software** | 9d | 2021-02-25 | 2021-03-09 |  | 6d |  |  | 288h |
| 33 | 1.3.1.1 | **3.1.1 Riconoscimento numeri/targhe** | 9d | 2021-02-25 | 2021-03-09 |  | 6d |  |  | 72h |
| 34 | 1.3.1.1.1 | 3.1.1.1 Ricerca | 2d | 2021-02-25 | 2021-02-26 | 10, 14, 18, 22, 29 | 6d | 0d | Pignata Marcello | 16h |
| 35 | 1.3.1.1.2 | 3.1.1.2 Sviluppo software | 5d | 2021-03-01 | 2021-03-05 | 34 | 6d | 0d | Pignata Marcello | 40h |
| 36 | 1.3.1.1.3 | 3.1.1.3 Test sul raspberry | 2d | 2021-03-08 | 2021-03-09 | 35, 54 | 6d |  | Pignata Marcello | 16h |
| 37 | 1.3.1.2 | **3.1.2 Riconoscimento lancette micro misurazioni** | 9d | 2021-02-25 | 2021-03-09 |  | 6d |  |  | 72h |
| 38 | 1.3.1.2.1 | 3.1.2.1 Ricerca | 2d | 2021-02-25 | 2021-02-26 | 10, 14, 18, 22, 29 | 6d | 0d | Moscatello Enrico | 16h |
| 39 | 1.3.1.2.2 | 3.1.2.2 Sviluppo software | 5d | 2021-03-01 | 2021-03-05 | 38 | 6d | 0d | Moscatello Enrico | 40h |
| 40 | 1.3.1.2.3 | 3.1.2.3 Test sul raspberry | 2d | 2021-03-08 | 2021-03-09 | 39, 54 | 6d |  | Moscatello Enrico | 16h |
| 41 | 1.3.1.3 | **3.1.3 Gestione stand-by del dispositivo** | 9d | 2021-02-25 | 2021-03-09 |  | 6d |  |  | 72h |
| 42 | 1.3.1.3.1 | 3.1.3.1 Ricerca | 2d | 2021-02-25 | 2021-02-26 | 10, 14, 18, 22, 29 | 6d | 0d | Angeretti Marco | 16h |
| 43 | 1.3.1.3.2 | 3.1.3.2 Sviluppo software | 5d | 2021-03-01 | 2021-03-05 | 42 | 6d | 0d | Angeretti Marco | 40h |
| 44 | 1.3.1.3.3 | 3.1.3.3 Test sul raspberry | 2d | 2021-03-08 | 2021-03-09 | 43, 54 | 6d |  | Angeretti Marco | 16h |
| 45 | 1.3.1.4 | **3.1.4 Invio dati al cloud server** | 9d | 2021-02-25 | 2021-03-09 |  | 6d |  |  | 72h |
| 46 | 1.3.1.4.1 | 3.1.4.1 Ricerca | 2d | 2021-02-25 | 2021-02-26 | 10, 14, 18, 22, 29 | 6d | 0d | Luppino Vincenzo | 16h |
| 47 | 1.3.1.4.2 | 3.1.4.2 Sviluppo software | 5d | 2021-03-01 | 2021-03-05 | 46 | 6d | 0d | Luppino Vincenzo | 40h |
| 48 | 1.3.1.4.3 | 3.1.4.3 Test sul raspberry | 2d | 2021-03-08 | 2021-03-09 | 47, 54 | 6d |  | Luppino Vincenzo | 16h |
| 49 | 1.3.2 | **3.2 Realizzazione hardware** | 12d | 2021-03-02 | 2021-03-17 |  | 0d |  |  | 104h |
| 50 | 1.3.2.1 | **3.2.1 Progettazione 3d** | 11d | 2021-03-02 | 2021-03-16 |  | 0d |  |  | 88h |
| 51 | 1.3.2.1.1 | 3.2.1.1 Disegno dell'involucro in 3d | 4d | 2021-03-02 | 2021-03-05 | 30 | 0d |  | Luppino Vincenzo | 32h |
| 52 | 1.3.2.1.2 | 3.2.1.2 Stampa 3d | 7d | 2021-03-08 | 2021-03-16 | 51 | 0d |  | Luppino Vincenzo | 56h |

| ID | WBS | Task | Duration | Start | Finish | Predecessors | Total slack | Free slack | Resources | Work |
| --- | --- | --- | --- | --- | --- | --- | --- | --- | --- | --- |
| 53 | 1.3.2.2 | **3.2.2 Montaggio hardware** | 12d | 2021-03-02 | 2021-03-17 |  | 0d |  |  | 16h |
| 54 | 1.3.2.2.1 | 3.2.2.1 Montaggio provvisorio | 1d | 2021-03-02 | 2021-03-02 | 30 | 9d | 3d | Angeretti Marco | 8h |
| 55 | 1.3.2.2.2 | 3.2.2.2 Montaggio completo con involucro 3d | 1d | 2021-03-17 | 2021-03-17 | 52, 54 | 0d |  | Angeretti Marco | 8h |
| 56 | 1.3.3 | 3.3 Test completo prototipo 2 | 3d | 2021-02-25 | 2021-03-01 | 10, 14, 18, 22, 29 | 12d |  | Moscatello Enrico | 24h |
